# 0.2.0_Project Planning

Schedule from MS Project, 2009-11-16 to 2014-05-05, A marks actual dates.
Microsoft

## Calendars

- 标准: Mon-Fri 08:00-12:00, 13:00-17:00; Sat-Sun off.

## Resources

| Resource |
| --- |
| 周帆 |
| 廖艺霖 |
| 黄志远 |
| 李可行 |
| 李扬 |
| 顾蔚文 |
| 严峥 |

## Schedule

| ID | WBS | Task | Type | Duration | Start | Finish | Predecessors | Complete | Remaining | Actual start | Total slack | Free slack | Resources | Work | Actual work |
| --- | --- | --- | --- | --- | --- | --- | --- | --- | --- | --- | --- | --- | --- | --- | --- |
| 1 | 1 | **V1.0** |  | 1164.88d | 2009-11-16 A | 2014-05-02 |  | 58% | 492.83d |  | 0d |  |  | 1232h | 856h |
| 2 | 1.1 | **Iteration 1** |  | 13d | 2014-01-08 A | 2014-01-27 A |  | 100% |  |  |  |  |  | 344h | 344h |
| 3 | 1.1.1 | 项目背景与发展文档 | manual | 5d | 2014-01-08 A | 2014-01-15 A |  | 100% |  |  |  |  | 周帆 | 40h | 40h |
| 4 | 1.1.2 | **需求分析模板** |  | 8d | 2014-01-08 A | 2014-01-20 A |  | 100% |  |  |  |  |  | 112h | 112h |
| 5 | 1.1.2.1 | 需求分析模板初稿 | manual | 3d | 2014-01-08 A | 2014-01-13 A |  | 100% |  |  |  |  | 周帆 | 24h | 24h |
| 6 | 1.1.2.2 | 需求分析模板评审 |  | 3d | 2014-01-13 A | 2014-01-16 A | 5 | 100% |  |  |  |  | 廖艺霖; 周帆; 黄志远 | 72h | 72h |
| 7 | 1.1.2.3 | 需求分析模板修改定稿 |  | 2d | 2014-01-16 A | 2014-01-20 A | 6 | 100% |  |  |  |  | 廖艺霖 | 16h | 16h |
| 8 | 1.1.3 | **详细设计模板** |  | 13d | 2014-01-08 A | 2014-01-27 A |  | 100% |  |  |  |  |  | 168h | 168h |
| 9 | 1.1.3.1 | 详细设计模板初稿 | manual | 5d | 2014-01-08 A | 2014-01-15 A |  | 100% |  |  |  |  | 黄志远 | 40h | 40h |
| 10 | 1.1.3.2 | 详细设计模板评审 |  | 4d | 2014-01-15 A | 2014-01-21 A | 9 | 100% |  |  |  |  | 周帆; 廖艺霖; 黄志远 | 96h | 96h |
| 11 | 1.1.3.3 | 详细设计模板定稿 |  | 4d | 2014-01-21 A | 2014-01-27 A | 10 | 100% |  |  |  |  | 黄志远 | 32h | 32h |
| 12 | 1.1.4 | 日线数据解析 | manual | 2d | 2014-01-15 A | 2014-01-17 A | 3 | 100% |  |  |  |  | 李可行 | 16h | 16h |
| 13 | 1.1.5 | 股票除权数据解析 | manual | 1d | 2014-01-17 A | 2014-01-20 A | 12 | 100% |  |  |  |  | 李可行 | 8h | 8h |
| 14 | 1.2 | **Iteration 2** |  | 13d | 2014-02-12 | 2014-02-28 A | 2 | 100% |  | 2014-01-20 |  |  |  | 272h | 272h |
| 15 | 1.2.1 | 同花顺操作基本知识文档 | manual | 1d | 2014-02-11 A | 2014-02-12 A |  | 100% |  |  |  |  | 严峥 | 8h | 8h |
| 16 | 1.2.2 | **数据导入功能** |  | 29d | 2014-01-20 A | 2014-02-28 A |  | 100% |  |  |  |  |  | 264h | 264h |
| 17 | 1.2.2.1 | 数据导入需求分析 | manual | 1d | 2014-01-20 A | 2014-01-21 A | 7 | 100% |  |  |  |  | 周帆 | 8h | 8h |
| 18 | 1.2.2.2 | 数据导入详细设计 | manual | 1d | 2014-01-27 A | 2014-01-28 A | 17, 11 | 100% |  |  |  |  | 黄志远 | 8h | 8h |
| 19 | 1.2.2.3 | 同花顺日线、除权数据DataImport程序编码 | manual | 3d | 2014-01-28 A | 2014-01-31 A | 18 | 100% |  |  |  |  | 黄志远 | 24h | 24h |
| 20 | 1.2.2.4 | Mysql部署说明书 | manual | 1d | 2014-01-31 A | 2014-02-03 A | 19 | 100% |  |  |  |  | 黄志远 | 8h | 8h |
| 21 | 1.2.2.5 | DataImport程序使用说明书 | manual | 1d | 2014-02-03 A | 2014-02-04 A | 19 | 100% |  |  |  |  | 黄志远 | 8h | 8h |
| 22 | 1.2.2.6 | DataImport测试用例 | manual | 4d | 2014-01-28 A | 2014-02-03 A | 18 | 100% |  |  |  |  | 严峥 | 32h | 32h |
| 23 | 1.2.2.7 | 数据导入功能签收 | manual | 11d | 2014-02-13 A | 2014-02-28 A | 19, 20, 21, 22 | 100% |  |  |  |  | 严峥; 顾蔚文 | 176h | 176h |
| 24 | 1.3 | **Iteration 3** |  | 22d | 2014-03-03 | 2014-04-01 | 14 | 45% | 12d | 2014-01-21 |  |  |  | 312h | 176h |
| 25 | 1.3.1 | **框架分布式模块** |  | 27.88d | 2014-02-03 A | 2014-03-12 |  | 53% | 13.12d |  | 5d | 0d |  | 192h | 128h |
| 26 | 1.3.1.1 | 框架分布式服务模块需求分析 | manual | 2d | 2014-02-03 A | 2014-02-05 A | 7 | 100% |  |  |  |  | 周帆 | 16h | 16h |
| 27 | 1.3.1.2 | 框架分布式服务模块详细设计 | manual | 7d | 2014-02-12 A | 2014-02-21 A | 26, 11 | 100% |  |  |  |  | 李扬; 李可行 | 112h | 112h |
| 28 | 1.3.1.3 | 分布式服务模块编码 |  | 8d | 2014-03-03 | 2014-03-12 | 27 |  |  |  | 5d |  | 李可行 | 64h |  |

| ID | WBS | Task | Type | Duration | Start | Finish | Predecessors | Complete | Remaining | Actual start | Total slack | Free slack | Constraint | Resources | Work | Actual work |
| --- | --- | --- | --- | --- | --- | --- | --- | --- | --- | --- | --- | --- | --- | --- | --- | --- |
| 29 | 1.3.2 | **数据查询功能** |  | 45.88d | 2014-01-21 A | 2014-03-25 |  | 40% | 27.52d |  | 5d |  |  |  | 120h | 48h |
| 30 | 1.3.2.1 | 数据查询需求分析 | manual | 1d | 2014-01-21 A | 2014-01-22 A | 7 | 100% |  |  |  |  |  | 周帆 | 8h | 8h |
| 31 | 1.3.2.2 | 数据查询详细设计 | manual | 2d | 2014-01-27 A | 2014-01-29 A | 30, 11 | 100% |  |  |  |  |  | 廖艺霖 | 16h | 16h |
| 32 | 1.3.2.3 | 数据查询接口编码 | manual | 3d | 2014-02-18 A | 2014-02-21 A | 31 | 100% |  |  |  |  |  | 廖艺霖 | 24h | 24h |
| 33 | 1.3.2.4 | Web客户端提供数据查询功能 |  | 4d | 2014-03-13 | 2014-03-18 | 25, 31 |  |  |  | 5d | 0d |  | 李可行 | 32h |  |
| 34 | 1.3.2.5 | 数据查询功能签收 |  | 5d | 2014-03-19 | 2014-03-25 | 33 |  |  |  | 5d |  |  | 顾蔚文 | 40h |  |
| 35 | 1.3.3 | 同花顺股票基础信息解析 | manual | 1d? | 2014-03-03 | 2014-03-03 |  |  |  |  |  |  |  |  |  |  |
| 36 | 1.4 | **Iteration 4** |  | 22d | 2014-04-02 | 2014-05-01 | 24 | 18% | 18d | 2009-11-16 |  |  |  |  | 304h | 64h |
| 37 | 1.4.1 | **框架用户模块** |  | 13d | 2014-01-20 A | 2014-02-06 |  | 13% | 11.27d |  | 0d |  |  |  | 120h | 16h |
| 38 | 1.4.1.1 | 框架用户模块需求分析 | manual | 2d | 2014-01-30 A | 2014-02-03 A | 7 | 100% |  |  |  |  |  | 周帆 | 16h | 16h |
| 39 | 1.4.1.2 | 框架设计文档 | manual | 10d | 2014-01-20 | 2014-02-03 | 3 |  |  |  |  |  |  | 李扬 | 80h |  |
| 40 | 1.4.1.3 | 框架用户模块详细设计 | manual | 3d | 2014-02-03 | 2014-02-06 | 38, 39, 11 |  |  |  |  |  |  | 李扬 | 24h |  |
| 41 | 1.4.2 | **股票筛选引擎** |  | 28d | 2014-01-22 A | 2014-03-03 |  | 29% | 20d |  | 0d |  |  |  | 112h | 32h |
| 42 | 1.4.2.1 | 股票筛选引擎需求分析 | manual | 2d | 2014-01-22 A | 2014-01-24 A | 7 | 100% |  |  |  |  |  | 周帆 | 16h | 16h |
| 43 | 1.4.2.2 | 股票筛选引擎详细设计 | manual | 2d | 2014-01-27 A | 2014-01-29 A | 42, 11 | 100% |  |  |  |  |  | 李可行 | 16h | 16h |
| 44 | 1.4.2.3 | 股票筛选引擎二次详细设计 | manual | 5d | 2014-02-14 | 2014-02-21 | 43 |  |  |  |  |  |  | 黄志远 | 40h |  |
| 45 | 1.4.2.4 | 股票筛选引擎编码 | manual | 5d | 2014-02-24 | 2014-03-03 | 44 |  |  |  |  |  |  | 黄志远 | 40h |  |
| 46 | 1.4.3 | **筛选准确度判断** |  | 5d | 2014-01-24 | 2014-01-31 |  |  |  |  | 0d |  |  |  | 32h |  |
| 47 | 1.4.3.1 | 股票筛选准确度判断需求分析 | manual | 2d | 2014-01-24 | 2014-01-28 | 7 |  |  |  |  |  |  | 周帆 | 16h |  |
| 48 | 1.4.3.2 | 股票筛选准确度判断详细设计 | manual | 2d | 2014-01-29 | 2014-01-31 | 47, 11 |  |  |  |  |  |  | 廖艺霖 | 16h |  |
| 49 | 1.4.4 | **股票筛选条件** |  | 1142.88d? | 2009-11-16 A | 2014-04-02 |  | 18% | 935.08d? |  | 21d |  |  |  | 40h | 16h |
| 50 | 1.4.4.1 | 股票筛选条件需求分析 | manual | 2d | 2014-01-28 A | 2014-01-30 A | 7 | 100% |  |  |  |  |  | 周帆 | 16h | 16h |
| 51 | 1.4.4.2 | 股票筛选条件详细设计 | manual | 3d | 2014-03-07 | 2014-03-12 | 50 |  |  |  |  |  | start no earlier than 2014-03-07 | 廖艺霖 | 24h |  |
| 52 | 1.4.4.3 | 筛选条件功能编码 | manual | 1d? | 2014-01-28 | 2014-01-29 |  |  |  |  |  |  |  |  |  |  |
| 53 | 1.4.4.4 | Web客户端提供筛选功能 | manual | 4d | 2009-11-16 | 2009-11-20 |  |  |  |  |  |  |  |  |  |  |
| 54 | 1.4.4.5 | 筛选引擎功能签收 |  | 1d? | 2014-04-02 | 2014-04-02 |  |  |  |  | 21d |  |  |  |  |  |
| 55 | 1.5 | V1.0 Release | manual | 1d | 2014-05-02 | 2014-05-02 | 36 |  |  |  |  |  |  |  |  |  |

| ID | WBS | Task | Type | Duration | Start | Finish | Predecessors | Total slack |
| --- | --- | --- | --- | --- | --- | --- | --- | --- |
| 56 | 2 | **v1.1** |  | 1d? | 2014-05-02 | 2014-05-05 | 55 | 0d |
| 57 | 2.1 | **Iteration 1** |  | 1d? | 2014-05-02 | 2014-05-05 |  | 0d |
| 58 | 2.1.1 | 大智慧支持数据预分析 | manual | 1d? | 2014-05-02 | 2014-05-05 |  |  |
